# Gantt Chart Project_BSD2_rev_07

Schedule from MS Project, 2016-09-12 to 2016-12-15, A marks actual dates.

## Calendars

- Standard: Mon-Fri 08:00-12:00, 13:00-17:00; Sat-Sun off.

## Resources

| Resource |
| --- |
| Fransisca |
| All Team |
| Jimmy |
| David |
| Sisca |
| Jimmy & Sisca |
| Daniel |
| Jimmy & Daniel & Sisca |
| FDaniel |
| FFransisca |
| All Programmer |

## Schedule

| ID | WBS | Task | Type | Duration | Start | Finish | Predecessors | Complete | Remaining | Total slack | Constraint | Resources | Work | Actual work |
| --- | --- | --- | --- | --- | --- | --- | --- | --- | --- | --- | --- | --- | --- | --- |
| 1 | 1 | **PEMBUATAN APLIKASI INVENTORI GUDANG** |  | 69d? | 2016-09-12 A | 2016-12-15 |  | 72% | 19.09d? | 0d |  |  | 1216h | 967.6h |
| 2 | 1.1 | **Analisa dan Desain Sistem** |  | 13d | 2016-09-12 A | 2016-09-28 A |  | 100% |  |  |  |  | 120h | 120h |
| 3 | 1.1.1 | Menganalisa Sistem Gudang |  | 2d | 2016-09-12 A | 2016-09-13 A |  | 100% |  |  | start no earlier than 2016-09-12 | All Team | 16h | 16h |
| 4 | 1.1.2 | Pembuatan Proposal |  | 8d | 2016-09-14 A | 2016-09-23 A |  | 100% |  |  | start no earlier than 2016-09-14 | All Team | 64h | 64h |
| 5 | 1.1.3 | Pembuatan Data Flow Diagram (DFD) |  | 2d | 2016-09-26 A | 2016-09-27 A |  | 100% |  |  | start no earlier than 2016-09-26 | David | 16h | 16h |
| 6 | 1.1.4 | Pembuatan ER-Diagram |  | 2d | 2016-09-27 A | 2016-09-28 A |  | 100% |  |  | start no earlier than 2016-09-27 | Fransisca | 16h | 16h |
| 7 | 1.1.5 | Dokumentasi Analisis dan Desain Sistem |  | 1d | 2016-09-28 A | 2016-09-28 A |  | 100% |  |  | start no earlier than 2016-09-28 | Fransisca | 8h | 8h |
| 8 | 1.2 | **Desain & Program Aplikasi** |  | 37d? | 2016-09-29 A | 2016-11-18 |  | 88% | 4.43d? | 19d |  |  | 848h | 834.4h |
| 9 | 1.2.1 | **Modul Login** |  | 7d? | 2016-09-29 A | 2016-10-07 |  | 50% | 3.5d? | 0d |  |  | 80h | 80h |
| 10 | 1.2.1.1 | Modul Login | milestone | 0d? | 2016-09-29 | 2016-09-29 |  |  |  | 0d | must start on 2016-09-29 |  |  |  |
| 11 | 1.2.1.2 | Modul Login | milestone | 0d? | 2016-10-07 | 2016-10-07 |  |  |  | 0d | must finish on 2016-10-07 |  |  |  |
| 12 | 1.2.1.3 | Desain Form Login |  | 1d | 2016-09-29 A | 2016-09-29 A |  | 100% |  |  | start no earlier than 2016-09-29 | Jimmy | 8h | 8h |
| 13 | 1.2.1.4 | Program Form Login |  | 2d | 2016-09-29 A | 2016-09-30 A | 6 | 100% |  |  |  | Jimmy | 16h | 16h |
| 14 | 1.2.1.5 | Testing Program |  | 1d | 2016-10-03 A | 2016-10-03 |  |  | 1d | 0d | start no earlier than 2016-10-03 | Jimmy | 8h | 8h |
| 15 | 1.2.1.6 | Desain Form Menu Utama |  | 1d | 2016-10-04 A | 2016-10-04 A |  | 100% |  |  | start no earlier than 2016-10-04 | Daniel | 8h | 8h |
| 16 | 1.2.1.7 | Program Form Menu Utama |  | 2d | 2016-10-04 A | 2016-10-05 |  |  | 2d | 0d | start no earlier than 2016-10-04 | Daniel | 16h | 16h |
| 17 | 1.2.1.8 | Testing Program |  | 1d | 2016-09-29 A | 2016-09-29 A |  | 100% |  |  |  | Daniel | 8h | 8h |
| 18 | 1.2.1.9 | Dokumentasi Modul Login |  | 2d | 2016-10-06 A | 2016-10-07 |  |  | 2d | 0d | start no earlier than 2016-10-06 | David | 16h | 16h |
| 19 | 1.2.2 | **Modul Master** |  | 13d | 2016-09-29 A | 2016-10-17 |  | 81% | 2.44d | 0d |  |  | 256h | 256h |
| 20 | 1.2.2.1 | Desain Form Master Barang |  | 1d | 2016-09-29 A | 2016-09-29 A |  | 100% |  |  | start no earlier than 2016-09-29 | Fransisca | 8h | 8h |
| 21 | 1.2.2.2 | Program Form Master Barang |  | 3d | 2016-09-29 A | 2016-10-03 |  |  | 3d | 0d | start no earlier than 2016-09-29 | Fransisca | 24h | 24h |
| 22 | 1.2.2.3 | Testing Program |  | 2d | 2016-09-30 A | 2016-10-03 A |  | 100% |  |  | start no earlier than 2016-09-30 | Fransisca | 16h | 16h |
| 23 | 1.2.2.4 | Desain Form Master Brand |  | 1d | 2016-10-04 A | 2016-10-04 A |  | 100% |  |  | start no earlier than 2016-10-04 | Daniel | 8h | 8h |
| 24 | 1.2.2.5 | Program Form Master Brand |  | 3d | 2016-10-04 A | 2016-10-06 A | 21 | 100% |  |  |  | Daniel | 24h | 24h |
| 25 | 1.2.2.6 | Testing Program |  | 2d | 2016-10-05 A | 2016-10-06 A |  | 100% |  |  | start no earlier than 2016-10-05 | Daniel | 16h | 16h |
| 26 | 1.2.2.7 | Desain Form Master Rak |  | 1d | 2016-10-06 A | 2016-10-06 A | 12 | 100% |  |  | start no earlier than 2016-10-06 | Jimmy | 8h | 8h |
| 27 | 1.2.2.8 | Program Form Master Rak |  | 3d | 2016-10-06 A | 2016-10-10 A |  | 100% |  |  | start no earlier than 2016-10-06 | Jimmy | 24h | 24h |
| 28 | 1.2.2.9 | Testing Program |  | 2d | 2016-10-07 A | 2016-10-10 A |  | 100% |  |  | start no earlier than 2016-10-07 | Jimmy | 16h | 16h |
| 29 | 1.2.2.10 | Desain Form Master Type |  | 1d | 2016-10-07 A | 2016-10-07 A |  | 100% |  |  | start no earlier than 2016-10-07 | Fransisca | 8h | 8h |
| 30 | 1.2.2.11 | Program Form Master Type |  | 3d | 2016-10-07 A | 2016-10-11 A |  | 100% |  |  | start no earlier than 2016-10-07 | Fransisca | 24h | 24h |
| 31 | 1.2.2.12 | Testing Program |  | 2d | 2016-10-10 A | 2016-10-11 A |  | 100% |  |  | start no earlier than 2016-10-10 | Fransisca | 16h | 16h |
| 32 | 1.2.2.13 | Desain Form Master Gudang |  | 1d | 2016-10-11 A | 2016-10-11 A | 29 | 100% |  |  | start no earlier than 2016-10-11 | Jimmy | 8h | 8h |
| 33 | 1.2.2.14 | Program Form Master Gudang |  | 3d | 2016-10-11 A | 2016-10-13 |  |  | 3d | 0d | start no earlier than 2016-10-11 | Jimmy | 24h | 24h |
| 34 | 1.2.2.15 | Testing Program |  | 2d | 2016-10-12 A | 2016-10-13 A | 26 | 100% |  |  | start no earlier than 2016-10-12 | Jimmy | 16h | 16h |
| 35 | 1.2.2.16 | Dokumentasi Modul Master |  | 2d | 2016-10-14 A | 2016-10-17 A | 33 | 100% |  |  |  | David | 16h | 16h |

| ID | WBS | Task | Duration | Start | Finish | Predecessors | Complete | Remaining | Total slack | Constraint | Resources | Work | Actual work |
| --- | --- | --- | --- | --- | --- | --- | --- | --- | --- | --- | --- | --- | --- |
| 36 | 1.2.3 | **Modul Transaksi** | 12d | 2016-10-24 A | 2016-11-08 A |  | 100% |  |  |  |  | 304h | 304h |
| 37 | 1.2.3.1 | Desain Form Transaksi Masuk | 1d | 2016-10-24 A | 2016-10-24 A | 23 | 100% |  |  | start no earlier than 2016-10-24 | Jimmy | 8h | 8h |
| 38 | 1.2.3.2 | Program Form Transaksi Masuk | 5d | 2016-10-24 A | 2016-10-28 A |  | 100% |  |  | start no earlier than 2016-10-24 | Jimmy | 40h | 40h |
| 39 | 1.2.3.3 | Testing Program | 3d | 2016-10-26 A | 2016-10-28 A | 37 | 100% |  |  | start no earlier than 2016-10-26 | Jimmy | 24h | 24h |
| 40 | 1.2.3.4 | Desain Form Transaksi Keluar | 1d | 2016-10-24 A | 2016-10-24 A |  | 100% |  |  | start no earlier than 2016-10-24 | Daniel | 8h | 8h |
| 41 | 1.2.3.5 | Program Form Transaksi Keluar | 5d | 2016-10-24 A | 2016-10-28 A | 34 | 100% |  |  | start no earlier than 2016-10-24 | Daniel | 40h | 40h |
| 42 | 1.2.3.6 | Testing Program | 3d | 2016-10-26 A | 2016-10-28 A |  | 100% |  |  | start no earlier than 2016-10-26 | Daniel | 24h | 24h |
| 43 | 1.2.3.7 | Desain Form Cetak Surat Jalan | 1d | 2016-10-31 A | 2016-10-31 A | 32 | 100% |  |  | start no earlier than 2016-10-31 | Fransisca | 8h | 8h |
| 44 | 1.2.3.8 | Program Form Cetak Surat Jalan | 5d | 2016-10-31 A | 2016-11-04 A |  | 100% |  |  | start no earlier than 2016-10-31 | Fransisca | 40h | 40h |
| 45 | 1.2.3.9 | Testing Program | 3d | 2016-11-02 A | 2016-11-04 A |  | 100% |  |  | start no earlier than 2016-11-02 | Fransisca | 24h | 24h |
| 46 | 1.2.3.10 | Desain Form Stok Opname | 1d | 2016-10-31 A | 2016-10-31 A |  | 100% |  |  | start no earlier than 2016-10-31 | Daniel | 8h | 8h |
| 47 | 1.2.3.11 | Program Form Stok Opname | 5d | 2016-10-31 A | 2016-11-04 A |  | 100% |  |  | start no earlier than 2016-10-31 | Daniel | 40h | 40h |
| 48 | 1.2.3.12 | Testing Program | 3d | 2016-11-02 A | 2016-11-04 A |  | 100% |  |  | start no earlier than 2016-11-02 | Daniel | 24h | 24h |
| 49 | 1.2.3.13 | Dokumentasi Modul Transaksi | 2d | 2016-11-07 A | 2016-11-08 A |  | 100% |  |  | start no earlier than 2016-11-05 | David | 16h | 16h |
| 50 | 1.2.4 | **Modul Laporan** | 8d | 2016-11-09 A | 2016-11-18 |  | 93% | 0.52d | 19d |  |  | 208h | 194.4h |
| 51 | 1.2.4.1 | Desain Laporan Stok Barang | 1d | 2016-11-09 A | 2016-11-09 A |  | 100% |  |  | start no earlier than 2016-11-09 | Fransisca | 8h | 8h |
| 52 | 1.2.4.2 | Program Laporan Stok Barang | 3d | 2016-11-09 A | 2016-11-11 A |  | 100% |  |  | start no earlier than 2016-11-09 | Fransisca | 24h | 24h |
| 53 | 1.2.4.3 | Testing Laporan | 2d | 2016-11-10 A | 2016-11-11 A |  | 100% |  |  | start no earlier than 2016-11-10 | Fransisca | 16h | 16h |
| 54 | 1.2.4.4 | Desain Laporan Stok Opname | 1d | 2016-11-09 A | 2016-11-09 A |  | 100% |  |  | start no earlier than 2016-11-09 | Daniel | 8h | 8h |
| 55 | 1.2.4.5 | Program Laporan Stok Opname | 3d | 2016-11-09 A | 2016-11-11 A |  | 100% |  |  | start no earlier than 2016-11-09 | Daniel | 24h | 24h |
| 56 | 1.2.4.6 | Testing Laporan | 2d | 2016-11-10 A | 2016-11-11 A |  | 100% |  |  | start no earlier than 2016-11-10 | Daniel | 16h | 16h |
| 57 | 1.2.4.7 | Desain Laporan Barang Masuk | 1d | 2016-11-14 A | 2016-11-14 A |  | 100% |  |  | start no earlier than 2016-11-14 | Fransisca | 8h | 8h |
| 58 | 1.2.4.8 | Program Laporan Barang Masuk | 3d | 2016-11-14 A | 2016-11-16 A |  | 100% |  |  | start no earlier than 2016-11-14 | Fransisca | 24h | 24h |
| 59 | 1.2.4.9 | Testing Laporan | 2d | 2016-11-15 A | 2016-11-16 A | 57 | 100% |  |  |  | Fransisca | 16h | 16h |
| 60 | 1.2.4.10 | Desain Laporan Barang Keluar | 1d | 2016-11-14 A | 2016-11-14 A | 56 | 100% |  |  |  | Jimmy | 8h | 8h |
| 61 | 1.2.4.11 | Program Laporan Barang Keluar | 3d | 2016-11-14 A | 2016-11-16 A | 55 | 100% |  |  |  | Jimmy | 24h | 24h |
| 62 | 1.2.4.12 | Testing Laporan | 2d | 2016-11-15 A | 2016-11-16 A | 60 | 100% |  |  |  | Jimmy | 16h | 16h |
| 63 | 1.2.4.13 | Dokumentasi | 2d | 2016-11-17 A | 2016-11-18 | 62 | 15% | 1.7d | 19d |  | David | 16h | 2.4h |

| ID | WBS | Task | Type | Duration | Start | Finish | Predecessors | Complete | Remaining | Total slack | Free slack | Constraint | Resources | Work | Actual work |
| --- | --- | --- | --- | --- | --- | --- | --- | --- | --- | --- | --- | --- | --- | --- | --- |
| 64 | 1.3 | **Testing Program** |  | 15d? | 2016-11-21 A | 2016-12-09 |  | 1% | 14.87d? | 4d |  |  |  | 136h | 1.2h |
| 65 | 1.3.1 | Testing Program | milestone | 0d? | 2016-11-21 | 2016-11-21 |  |  |  | 0d |  | must start on 2016-11-21 |  |  |  |
| 66 | 1.3.2 | Testing Program | milestone | 0d? | 2016-12-09 | 2016-12-09 |  |  |  | 0d |  | must finish on 2016-12-09 |  |  |  |
| 67 | 1.3.3 | Beta Tester Program |  | 4d | 2016-11-21 A | 2016-11-24 |  |  | 4d | 15d |  | start no earlier than 2016-11-21 | All Team | 32h |  |
| 68 | 1.3.4 | Melakukan Catatan list perbaikan |  | 1d | 2016-11-24 A | 2016-11-24 |  |  | 1d | 4d | 0d | start no earlier than 2016-11-24 | David | 8h |  |
| 69 | 1.3.5 | Dokumentasi Testing Program |  | 1d | 2016-11-25 A | 2016-11-25 |  | 15% | 0.85d | 14d |  | start no earlier than 2016-11-25 | David | 8h | 1.2h |
| 70 | 1.3.6 | Perbaikan Program |  | 11d | 2016-11-25 | 2016-12-09 | 68 |  |  | 4d |  |  | All Team | 88h |  |
| 71 | 1.4 | **Dokumentasi** |  | 14d? | 2016-11-26 A | 2016-12-15 |  | 11% | 12.5d? | 0d |  |  |  | 112h | 12h |
| 72 | 1.4.1 | Dokumentasi | milestone | 0d? | 2016-11-26 | 2016-11-26 |  |  |  | 0d |  | must start on 2016-11-26 |  |  |  |
| 73 | 1.4.2 | Dokumentasi | milestone | 0d? | 2016-12-15 | 2016-12-15 |  |  |  | 0d |  | must finish on 2016-12-15 |  |  |  |
| 74 | 1.4.3 | Pembuatan Buku |  | 10d | 2016-11-26 A | 2016-12-08 |  | 15% | 8.5d | 5d |  | start no earlier than 2016-11-26 | All Team | 80h | 12h |
| 75 | 1.4.4 | Revisi |  | 4d | 2016-12-12 A | 2016-12-15 |  |  | 4d | 0d |  | start no earlier than 2016-12-12 | All Team | 32h |  |
